# 1_part

How a schedule from MS Project changed from version to version. A marks actual dates.

## Version 1 (saved 2024-10-24, file Факт.mpp)

Note of the change: Add the other 4 course info

| ID | WBS | Task | Duration | Start | Finish | Predecessors | Complete | Total float | Constraint |
| --- | --- | --- | --- | --- | --- | --- | --- | --- | --- |
| 1 |  | Начало проекта | 0d | 2024-09-06 | 2024-09-06 |  |  | 6.25d |  |
| 2 | 2 | **Утверждение проектов** | 151d | 2024-09-06 | 2025-04-11 |  |  | 6.25d |  |
| 3 |  | Начало утверждения проектов | 1d | 2024-09-06 | 2024-09-06 | 1 |  | 6.25d |  |
| 4 |  | Утверждение проекта на строительство | 150d | 2024-09-09 | 2025-04-11 | 3 |  | 6.25d |  |
| 5 |  | Утверждение проекта на газ | 120d | 2024-09-09 | 2025-02-28 | 3 |  | 30d |  |
| 6 |  | Утверждение проекта на водопровод и канализацию | 60d | 2024-09-09 | 2024-12-02 | 3 |  | 90d |  |
| 7 |  | Утверждение проекта на отпопление | 45d | 2024-09-09 | 2024-11-11 | 3 |  | 105d |  |
| 8 |  | Проекты утвеждены | 0d | 2025-04-11 | 2025-04-11 | 4, 5, 6, 7 |  | 6.25d |  |
| 9 | 3 | **Строительство фундамента** | 47d | 2025-04-14 A | 2025-06-20 |  | 25% | 0d |  |
| 10 |  | Начало закладки фундамента | 2d | 2025-04-14 | 2025-04-15 | 8 |  | 6.25d |  |
| 11 |  | Рытье трнашей | 10d | 2025-04-16 A | 2025-04-30 | 10 | 42% | 0d |  |
| 12 |  | Заливка фундамента | 5d | 2025-06-16 | 2025-06-20 | 11FS+30d |  | 0d |  |
| 13 |  | Фундамент завершен | 0d | 2025-06-20 | 2025-06-20 | 12 |  | 0d |  |
| 14 | 4 | **Каркас и крыша** | 111d | 2025-06-23 | 2025-11-26 |  |  | 0d |  |
| 15 |  | Начало каркаса | 1d | 2025-06-23 | 2025-06-23 | 13 |  | 0d |  |
| 16 |  | Кладка стен | 60d | 2025-06-24 | 2025-09-16 | 15 |  | 0d |  |
| 17 |  | Перекрытие стен | 15d | 2025-09-17 | 2025-10-07 | 16 |  | 0d |  |
| 18 |  | Установка крыши | 30d | 2025-10-08 | 2025-11-19 | 17 |  | 5d |  |
| 19 |  | Установка наружных дверей и окон | 7d | 2025-10-08 | 2025-10-16 | 17 |  | 28d |  |
| 20 |  | Установка полов | 5d | 2025-11-20 | 2025-11-26 | 17 |  | 0d |  |
| 21 |  | Каркас готов | 0d | 2025-11-26 | 2025-11-26 | 18, 19, 20 |  | 0d |  |
| 22 | 5 | **Коммуникации** | 11d | 2025-11-27 | 2025-12-11 |  |  | 0d |  |
| 23 |  | Начало установки коммуникаций | 1d | 2025-11-27 | 2025-11-27 | 21 |  | 0d |  |
| 24 |  | Проведение и подключение водопровода и канализации | 10d | 2025-11-28 | 2025-12-11 | 23 |  | 0d |  |
| 25 |  | Установка и подключение электропроводки | 5d | 2025-11-28 | 2025-12-04 | 23 |  | 5d |  |
| 26 |  | Установка и подключение газовых коммуникаций | 5d | 2025-11-28 | 2025-12-04 | 23 |  | 5d |  |
| 27 |  | Коммуникации готовы | 0d | 2025-12-11 | 2025-12-11 | 24, 25, 26 |  | 0d |  |
| 28 | 6 | **Внутренняя отделка** | 40d | 2025-12-11 | 2026-02-05 |  |  | 0d |  |
| 29 |  | Начало отделки | 0d | 2025-12-11 | 2025-12-11 | 27 |  | 0d |  |
| 30 |  | Внутренние двери | 10d | 2025-12-12 | 2025-12-25 | 29 |  | 0d |  |
| 31 |  | Навесные потолки | 5d | 2025-12-26 | 2026-01-01 | 30 |  | 5d |  |
| 32 |  | Отделка стен | 3d | 2026-01-13 | 2026-01-15 | 30 |  | 0d | as late as possible |
| 33 |  | Монтаж отопления | 10d | 2025-12-26 | 2026-01-08 | 30 |  | 0d |  |
| 34 |  | Установка оборудования, приборов, сантехники | 5d | 2026-01-09 | 2026-01-15 | 31, 33 |  | 0d |  |
| 35 |  | Настил полов | 15d | 2026-01-16 | 2026-02-05 | 32, 34 |  | 0d |  |
| 36 |  | Конец отделки | 0d | 2026-02-05 | 2026-02-05 | 35 |  | 0d |  |
| 37 |  | Конец проекта | 0d | 2026-02-05 | 2026-02-05 | 36 |  | 0d |  |

## Version 2 (data date 2024-10-24, saved 2024-10-25, file Процент.mpp)

Note of the change: Add the other 4 course info

Last finish stays 2026-02-05. Complete tasks 0 → 1.

Changed:

| ID | Task | Start | Finish | Complete | Total float | Other |
| --- | --- | --- | --- | --- | --- | --- |
| 1 | Начало проекта |  |  |  | 6.25d → 360d | baseline start none → 2024-09-06; baseline finish none → 2024-09-06 |
| 2 | **Утверждение проектов** | 2024-09-06 A |  | 0% → 40% | 6.25d → 0d | baseline start none → 2024-09-06; baseline finish none → 2025-04-11 |
| 3 | Начало утверждения проектов | 2024-09-06 A | 2024-09-06 A | 0% → 100% | 6.25d → none | baseline start none → 2024-09-06; baseline finish none → 2024-09-06 |
| 4 | Утверждение проекта на строительство | 2024-09-09 A |  | 0% → 25% | 6.25d → 0d | baseline start none → 2024-09-09; baseline finish none → 2025-04-11 |
| 5 | Утверждение проекта на газ | 2024-09-09 A |  | 0% → 31% |  | baseline start none → 2024-09-09; baseline finish none → 2025-02-28 |
| 6 | Утверждение проекта на водопровод и канализацию | 2024-09-09 A |  | 0% → 62% |  | baseline start none → 2024-09-09; baseline finish none → 2024-12-02 |
| 7 | Утверждение проекта на отпопление | 2024-09-09 A |  | 0% → 83% |  | baseline start none → 2024-09-09; baseline finish none → 2024-11-11 |
| 8 | Проекты утвеждены |  |  |  | 6.25d → 0d | baseline start none → 2025-04-11; baseline finish none → 2025-04-11 |
| 9 | **Строительство фундамента** | 2025-04-14 A → 2025-04-14 |  | 25% → 0% |  | baseline start none → 2025-04-14; baseline finish none → 2025-06-20 |
| 10 | Начало закладки фундамента |  |  |  | 6.25d → 0d | baseline start none → 2025-04-14; baseline finish none → 2025-04-15 |
| 11 | Рытье трнашей | 2025-04-16 A → 2025-04-16 |  | 42% → 0% |  | baseline start none → 2025-04-16; baseline finish none → 2025-04-30 |
| 12 | Заливка фундамента |  |  |  |  | baseline start none → 2025-06-16; baseline finish none → 2025-06-20 |
| 13 | Фундамент завершен |  |  |  |  | baseline start none → 2025-06-20; baseline finish none → 2025-06-20 |
| 14 | **Каркас и крыша** |  |  |  |  | baseline start none → 2025-06-23; baseline finish none → 2025-11-26 |
| 15 | Начало каркаса |  |  |  |  | baseline start none → 2025-06-23; baseline finish none → 2025-06-23 |
| 16 | Кладка стен |  |  |  |  | baseline start none → 2025-06-24; baseline finish none → 2025-09-16 |
| 17 | Перекрытие стен |  |  |  |  | baseline start none → 2025-09-17; baseline finish none → 2025-10-07 |
| 18 | Установка крыши |  |  |  |  | baseline start none → 2025-10-08; baseline finish none → 2025-11-19 |
| 19 | Установка наружных дверей и окон |  |  |  |  | baseline start none → 2025-10-08; baseline finish none → 2025-10-16 |
| 20 | Установка полов |  |  |  |  | baseline start none → 2025-11-20; baseline finish none → 2025-11-26 |
| 21 | Каркас готов |  |  |  |  | baseline start none → 2025-11-26; baseline finish none → 2025-11-26 |
| 22 | **Коммуникации** |  |  |  |  | baseline start none → 2025-11-27; baseline finish none → 2025-12-11 |
| 23 | Начало установки коммуникаций |  |  |  |  | baseline start none → 2025-11-27; baseline finish none → 2025-11-27 |
| 24 | Проведение и подключение водопровода и канализации |  |  |  |  | baseline start none → 2025-11-28; baseline finish none → 2025-12-11 |
| 25 | Установка и подключение электропроводки |  |  |  |  | baseline start none → 2025-11-28; baseline finish none → 2025-12-04 |
| 26 | Установка и подключение газовых коммуникаций |  |  |  |  | baseline start none → 2025-11-28; baseline finish none → 2025-12-04 |
| 27 | Коммуникации готовы |  |  |  |  | baseline start none → 2025-12-11; baseline finish none → 2025-12-11 |
| 28 | **Внутренняя отделка** |  |  |  |  | baseline start none → 2025-12-11; baseline finish none → 2026-02-05 |
| 29 | Начало отделки |  |  |  |  | baseline start none → 2025-12-11; baseline finish none → 2025-12-11 |
| 30 | Внутренние двери |  |  |  |  | baseline start none → 2025-12-12; baseline finish none → 2025-12-25 |
| 31 | Навесные потолки |  |  |  |  | baseline start none → 2025-12-26; baseline finish none → 2026-01-01 |
| 32 | Отделка стен |  |  |  |  | baseline start none → 2026-01-13; baseline finish none → 2026-01-15 |
| 33 | Монтаж отопления |  |  |  |  | baseline start none → 2025-12-26; baseline finish none → 2026-01-08 |
| 34 | Установка оборудования, приборов, сантехники |  |  |  |  | baseline start none → 2026-01-09; baseline finish none → 2026-01-15 |
| 35 | Настил полов |  |  |  |  | baseline start none → 2026-01-16; baseline finish none → 2026-02-05 |
| 36 | Конец отделки |  |  |  |  | baseline start none → 2026-02-05; baseline finish none → 2026-02-05 |
| 37 | Конец проекта |  |  |  |  | baseline start none → 2026-02-05; baseline finish none → 2026-02-05 |

## Version 3 (saved 2024-11-01, file Ресурсы.mpp)

Note of the change: Add the other 4 course info

Last finish 2026-02-05 → 2026-02-18 (+13d).

Changed:

| ID | Task | Start | Finish | Duration | Complete | Total float | Other |
| --- | --- | --- | --- | --- | --- | --- | --- |
| 1 | Начало проекта |  |  |  |  | 360d → 217.62d | baseline start 2024-09-06 → none; baseline finish 2024-09-06 → none |
| 2 | **Утверждение проектов** |  | 2025-04-11 → 2025-05-12 (+31d) | 151d → 168.75d | 40% → 5% | 0d → 199.88d | baseline start 2024-09-06 → none; baseline finish 2025-04-11 → none |
| 3 | Начало утверждения проектов | 2024-09-06 A → 2024-09-06 | 2024-09-06 A → 2024-09-06 |  | 100% → 0% | none → 217.62d | baseline start 2024-09-06 → none; baseline finish 2024-09-06 → none |
| 4 | Утверждение проекта на строительство | 2024-09-09 A → 2024-09-09 |  |  | 25% → 0% | 0d → 217.62d | baseline start 2024-09-09 → none; baseline finish 2025-04-11 → none |
| 5 | Утверждение проекта на газ | 2024-09-09 A → 2024-09-09 |  |  | 31% → 0% | 30d → 247.62d | baseline start 2024-09-09 → none; baseline finish 2025-02-28 → none |
| 6 | Утверждение проекта на водопровод и канализацию | 2024-09-09 A → 2024-09-09 |  |  | 62% → 0% | 90d → 307.62d | baseline start 2024-09-09 → none; baseline finish 2024-12-02 → none |
| 7 | Утверждение проекта на отпопление | 2024-09-09 A → 2024-09-09 |  |  | 83% → 0% | 105d → 322.62d | baseline start 2024-09-09 → none; baseline finish 2024-11-11 → none |
| 8 | Проекты утвеждены | 2025-04-11 A | 2025-04-11 → 2025-05-12 A (+31d) | 0d → 17.75d | 0% → 100% | 0d → none | baseline start 2025-04-11 → none; baseline finish 2025-04-11 → none |
| 9 | **Строительство фундамента** | 2025-04-14 → 2025-05-12 (+28d) | 2025-06-20 → 2025-07-17 (+27d) |  |  |  | baseline start 2025-04-14 → none; baseline finish 2025-06-20 → none |
| 10 | Начало закладки фундамента | 2025-04-14 → 2025-05-12 (+28d) | 2025-04-15 → 2025-05-14 (+29d) |  |  |  | baseline start 2025-04-14 → none; baseline finish 2025-04-15 → none |
| 11 | Рытье трнашей | 2025-04-16 → 2025-05-14 (+28d) | 2025-04-30 → 2025-05-28 (+28d) |  |  |  | baseline start 2025-04-16 → none; baseline finish 2025-04-30 → none |
| 12 | Заливка фундамента | 2025-06-16 → 2025-07-10 (+24d) | 2025-06-20 → 2025-07-17 (+27d) |  |  |  | resources Доска необрезная [3 м3]; Доставка [0.1%]; Песок [10 т]; Подсобник1; Подсобник2; Рабочий1; Рабочий2; Рабочий3; Цемент [2.5 т]; Щебень [10 т] → Доска необрезная; Доставка [0.1%]; Песок; Подсобник1; Подсобник2; Рабочий1; Рабочий2; Рабочий3; Цемент; Щебень; baseline start 2025-06-16 → none; baseline finish 2025-06-20 → none |
| 13 | Фундамент завершен | 2025-06-20 → 2025-07-17 (+27d) | 2025-06-20 → 2025-07-17 (+27d) |  |  |  | baseline start 2025-06-20 → none; baseline finish 2025-06-20 → none |
| 14 | **Каркас и крыша** | 2025-06-23 → 2025-07-17 (+24d) | 2025-11-26 → 2025-12-22 (+26d) | 111d → 110.75d |  |  | baseline start 2025-06-23 → none; baseline finish 2025-11-26 → none |
| 15 | Начало каркаса | 2025-06-23 → 2025-07-17 (+24d) | 2025-06-23 → 2025-07-18 (+25d) |  |  |  | baseline start 2025-06-23 → none; baseline finish 2025-06-23 → none |
| 16 | Кладка стен | 2025-06-24 → 2025-07-18 (+24d) | 2025-09-16 → 2025-10-10 (+24d) |  |  |  | resources Доставка [0.1%]; Подсобник1; Подсобник2; Рабочий1; Рабочий2; Рабочий3; Кирпич [70000 шт]; Песок [6 т]; Цемент [2 т] → Доставка [0.1%]; Подсобник1; Подсобник2; Рабочий1; Рабочий2; Рабочий3; Кирпич; Песок; Цемент; baseline start 2025-06-24 → none; baseline finish 2025-09-16 → none |
| 17 | Перекрытие стен | 2025-09-17 → 2025-10-10 (+23d) | 2025-10-07 → 2025-10-31 (+24d) |  |  |  | resources Брус [1500%]; Доска обрезная [7 м3]; Доставка [0.1%]; Подсобник1; Подсобник2; Рабочий1; Рабочий2; Рабочий3 → Брус; Доска обрезная; Доставка [0.1%]; Подсобник1; Подсобник2; Рабочий1; Рабочий2; Рабочий3; baseline start 2025-09-17 → none; baseline finish 2025-10-07 → none |
| 18 | Установка крыши | 2025-10-08 → 2025-10-31 (+23d) | 2025-11-19 → 2025-12-15 (+26d) |  |  | 5d → 4.75d | resources Доска необрезная [10 м3]; Доставка [0.1%]; Плотник1; Плотник2; Шифер [2000%] → Доска необрезная; Доставка [0.1%]; Плотник1; Плотник2; Шифер; baseline start 2025-10-08 → none; baseline finish 2025-11-19 → none |
| 19 | Установка наружных дверей и окон | 2025-10-08 → 2025-10-31 (+23d) | 2025-10-16 → 2025-11-12 (+27d) | 7d → 0d |  | 28d → 27.75d | baseline start 2025-10-08 → none; baseline finish 2025-10-16 → none |
| 20 | Установка полов | 2025-11-20 → 2025-10-31 (-20d) | 2025-11-26 → 2025-12-22 (+26d) |  |  |  | resources Доска обрезная [10 м3]; Доставка [0.1%]; Плотник1; Плотник2 → Доска обрезная; Доставка [0.1%]; Плотник1; Плотник2; baseline start 2025-11-20 → none; baseline finish 2025-11-26 → none |
| 21 | Каркас готов | 2025-11-26 → 2025-12-22 (+26d) | 2025-11-26 → 2025-12-22 (+26d) |  |  |  | baseline start 2025-11-26 → none; baseline finish 2025-11-26 → none |
| 22 | **Коммуникации** | 2025-11-27 → 2025-12-22 (+25d) | 2025-12-11 → 2025-12-30 (+19d) | 11d → 6d |  |  | baseline start 2025-11-27 → none; baseline finish 2025-12-11 → none |
| 23 | Начало установки коммуникаций | 2025-11-27 → 2025-12-22 (+25d) | 2025-11-27 → 2025-12-23 (+26d) |  |  |  | baseline start 2025-11-27 → none; baseline finish 2025-11-27 → none |
| 24 | Проведение и подключение водопровода и канализации | 2025-11-28 → 2025-12-23 (+25d) | 2025-12-11 → 2025-12-23 (+12d) | 10d → 0d |  | 0d → 5d | baseline start 2025-11-28 → none; baseline finish 2025-12-11 → none |
| 25 | Установка и подключение электропроводки | 2025-11-28 → 2025-12-23 (+25d) | 2025-12-04 → 2025-12-23 (+19d) | 5d → 0d |  |  | resources Электрик; Электропровод [10000%]; Электросчетчик → Электрик; Электропровод; Электросчетчик; baseline start 2025-11-28 → none; baseline finish 2025-12-04 → none |
| 26 | Установка и подключение газовых коммуникаций | 2025-11-28 → 2025-12-23 (+25d) | 2025-12-04 → 2025-12-30 (+26d) | 5d → 0d |  | 5d → 0d | baseline start 2025-11-28 → none; baseline finish 2025-12-04 → none |
| 27 | Коммуникации готовы | 2025-12-11 → 2025-12-30 (+19d) | 2025-12-11 → 2025-12-30 (+19d) |  |  |  | baseline start 2025-12-11 → none; baseline finish 2025-12-11 → none |
| 28 | **Внутренняя отделка** | 2025-12-11 → 2025-12-05 A (-6d) | 2026-02-05 → 2026-02-18 (+13d) | 40d → 53.62d | 0% → 12% |  | baseline start 2025-12-11 → none; baseline finish 2026-02-05 → none |
| 29 | Начало отделки | 2025-12-11 → 2025-12-30 (+19d) | 2025-12-11 → 2025-12-30 (+19d) |  |  |  | baseline start 2025-12-11 → none; baseline finish 2025-12-11 → none |
| 30 | Внутренние двери | 2025-12-12 → 2025-12-05 A (-7d) | 2025-12-25 → 2026-01-07 (+13d) |  | 0% → 39% | 0d → 5d | baseline start 2025-12-12 → none; baseline finish 2025-12-25 → none |
| 31 | Навесные потолки | 2025-12-26 → 2026-01-07 (+12d) | 2026-01-01 → 2026-01-14 (+13d) |  |  | 5d → 10d | baseline start 2025-12-26 → none; baseline finish 2026-01-01 → none |
| 32 | Отделка стен | 2026-01-13 → 2026-01-23 (+10d) | 2026-01-15 → 2026-01-28 (+13d) |  |  |  | baseline start 2026-01-13 → none; baseline finish 2026-01-15 → none |
| 33 | Монтаж отопления | 2025-12-26 → 2026-01-07 (+12d) | 2026-01-08 → 2026-01-21 (+13d) | 10d → 0d |  | 0d → 5d | baseline start 2025-12-26 → none; baseline finish 2026-01-08 → none |
| 34 | Установка оборудования, приборов, сантехники | 2026-01-09 → 2026-01-02 A (-7d) | 2026-01-15 → 2026-01-28 (+13d) | 5d → 0d | 0% → 99% |  | baseline start 2026-01-09 → none; baseline finish 2026-01-15 → none |
| 35 | Настил полов | 2026-01-16 → 2026-01-28 (+12d) | 2026-02-05 → 2026-02-18 (+13d) |  |  |  | baseline start 2026-01-16 → none; baseline finish 2026-02-05 → none |
| 36 | Конец отделки | 2026-02-05 → 2026-02-18 (+13d) | 2026-02-05 → 2026-02-18 (+13d) |  |  |  | baseline start 2026-02-05 → none; baseline finish 2026-02-05 → none |
| 37 | Конец проекта | 2026-02-05 → 2026-02-18 (+13d) | 2026-02-05 → 2026-02-18 (+13d) |  |  |  | baseline start 2026-02-05 → none; baseline finish 2026-02-05 → none |

## Version 4 (saved 2024-11-01, file Задачи.mpp)

Note of the change: Add the other 4 course info

Last finish 2026-02-18 → 2026-02-05 (-13d). Complete tasks 1 → 0.

Changed:

| ID | Task | Start | Finish | Duration | Complete | Total float | Other |
| --- | --- | --- | --- | --- | --- | --- | --- |
| 2 | **Утверждение проектов** | 2024-09-06 A → 2024-09-06 | 2025-05-12 → 2025-04-11 (-31d) | 168.75d → 151d | 5% → 0% | 199.88d → 60d |  |
| 8 | Проекты утвеждены | 2025-04-11 A → 2025-04-11 | 2025-05-12 A → 2025-04-11 (-31d) | 17.75d → 0d | 100% → 0% | none → 60d |  |
| 9 | **Строительство фундамента** | 2025-05-12 → 2025-04-14 (-28d) | 2025-07-17 → 2025-06-20 (-27d) |  |  | 0d → 60d |  |
| 10 | Начало закладки фундамента | 2025-05-12 → 2025-04-14 (-28d) | 2025-05-14 → 2025-04-15 (-29d) |  |  | 0d → 60d |  |
| 11 | Рытье трнашей | 2025-05-14 → 2025-04-16 (-28d) | 2025-05-28 → 2025-04-30 (-28d) |  |  | 0d → 60d |  |
| 12 | Заливка фундамента | 2025-07-10 → 2025-06-16 (-24d) | 2025-07-17 → 2025-06-20 (-27d) |  |  | 0d → 60d | resources Доска необрезная; Доставка [0.1%]; Песок; Подсобник1; Подсобник2; Рабочий1; Рабочий2; Рабочий3; Цемент; Щебень → Доска необрезная [3 м3]; Доставка [0.1%]; Песок [10 т]; Подсобник1; Подсобник2; Рабочий1; Рабочий2; Рабочий3; Цемент [2.5 т]; Щебень [10 т] |
| 13 | Фундамент завершен | 2025-07-17 → 2025-06-20 (-27d) | 2025-07-17 → 2025-06-20 (-27d) |  |  | 0d → 60d |  |
| 14 | **Каркас и крыша** | 2025-07-17 → 2025-06-23 A (-24d) | 2025-12-22 → 2025-11-26 (-26d) | 110.75d → 111d | 0% → 59% |  |  |
| 15 | Начало каркаса | 2025-07-17 → 2025-06-23 (-24d) | 2025-07-18 → 2025-06-23 (-25d) |  |  | 0d → 60d |  |
| 16 | Кладка стен | 2025-07-18 → 2025-06-24 A (-24d) | 2025-10-10 → 2025-09-16 (-24d) |  | 0% → 99% | 0d → 10d | resources Доставка [0.1%]; Подсобник1; Подсобник2; Рабочий1; Рабочий2; Рабочий3; Кирпич; Песок; Цемент → Доставка [0.1%]; Подсобник1; Подсобник2; Рабочий1; Рабочий2; Рабочий3; Кирпич [70000 шт]; Песок [6 т]; Цемент [2 т] |
| 17 | Перекрытие стен | 2025-10-10 → 2025-09-17 A (-23d) | 2025-10-31 → 2025-10-07 (-24d) |  | 0% → 67% |  | resources Брус; Доска обрезная; Доставка [0.1%]; Подсобник1; Подсобник2; Рабочий1; Рабочий2; Рабочий3 → Брус [1500%]; Доска обрезная [7 м3]; Доставка [0.1%]; Подсобник1; Подсобник2; Рабочий1; Рабочий2; Рабочий3 |
| 18 | Установка крыши | 2025-10-31 → 2025-10-08 (-23d) | 2025-12-15 → 2025-11-19 (-26d) |  |  | 4.75d → 5d | resources Доска необрезная; Доставка [0.1%]; Плотник1; Плотник2; Шифер → Доска необрезная [10 м3]; Доставка [0.1%]; Плотник1; Плотник2; Шифер [2000%] |
| 19 | Установка наружных дверей и окон | 2025-10-31 → 2025-10-08 (-23d) | 2025-11-12 → 2025-10-16 (-27d) | 0d → 7d |  | 27.75d → 28d |  |
| 20 | Установка полов | 2025-10-31 → 2025-11-20 (+20d) | 2025-12-22 → 2025-11-26 (-26d) |  |  |  | resources Доска обрезная; Доставка [0.1%]; Плотник1; Плотник2 → Доска обрезная [10 м3]; Доставка [0.1%]; Плотник1; Плотник2 |
| 21 | Каркас готов | 2025-12-22 → 2025-11-26 (-26d) | 2025-12-22 → 2025-11-26 (-26d) |  |  |  |  |
| 22 | **Коммуникации** | 2025-12-22 → 2025-11-27 (-25d) | 2025-12-30 → 2025-12-11 (-19d) | 6d → 11d |  |  |  |
| 23 | Начало установки коммуникаций | 2025-12-22 → 2025-11-27 (-25d) | 2025-12-23 → 2025-11-27 (-26d) |  |  |  |  |
| 24 | Проведение и подключение водопровода и канализации | 2025-12-23 → 2025-11-28 (-25d) | 2025-12-23 → 2025-12-11 (-12d) | 0d → 10d |  | 5d → 0d |  |
| 25 | Установка и подключение электропроводки | 2025-12-23 → 2025-11-28 (-25d) | 2025-12-23 → 2025-12-04 (-19d) | 0d → 5d |  |  | resources Электрик; Электропровод; Электросчетчик → Электрик; Электропровод [10000%]; Электросчетчик |
| 26 | Установка и подключение газовых коммуникаций | 2025-12-23 → 2025-11-28 (-25d) | 2025-12-30 → 2025-12-04 (-26d) | 0d → 5d |  | 0d → 5d |  |
| 27 | Коммуникации готовы | 2025-12-30 → 2025-12-11 (-19d) | 2025-12-30 → 2025-12-11 (-19d) |  |  |  |  |
| 28 | **Внутренняя отделка** | 2025-12-05 A → 2025-12-11 (+6d) | 2026-02-18 → 2026-02-05 (-13d) | 53.62d → 40d | 12% → 0% |  |  |
| 29 | Начало отделки | 2025-12-30 → 2025-12-11 (-19d) | 2025-12-30 → 2025-12-11 (-19d) |  |  |  |  |
| 30 | Внутренние двери | 2025-12-05 A → 2025-12-12 (+7d) | 2026-01-07 → 2025-12-25 (-13d) |  | 39% → 0% | 5d → 0d |  |
| 31 | Навесные потолки | 2026-01-07 → 2025-12-26 (-12d) | 2026-01-14 → 2026-01-01 (-13d) |  |  | 10d → 5d |  |
| 32 | Отделка стен | 2026-01-23 → 2026-01-13 (-10d) | 2026-01-28 → 2026-01-15 (-13d) |  |  |  |  |
| 33 | Монтаж отопления | 2026-01-07 → 2025-12-26 (-12d) | 2026-01-21 → 2026-01-08 (-13d) | 0d → 10d |  | 5d → 0d |  |
| 34 | Установка оборудования, приборов, сантехники | 2026-01-02 A → 2026-01-09 (+7d) | 2026-01-28 → 2026-01-15 (-13d) | 0d → 5d | 99% → 0% |  |  |
| 35 | Настил полов | 2026-01-28 → 2026-01-16 (-12d) | 2026-02-18 → 2026-02-05 (-13d) |  |  |  |  |
| 36 | Конец отделки | 2026-02-18 → 2026-02-05 (-13d) | 2026-02-18 → 2026-02-05 (-13d) |  |  |  |  |
| 37 | Конец проекта | 2026-02-18 → 2026-02-05 (-13d) | 2026-02-18 → 2026-02-05 (-13d) |  |  |  |  |
